# Session 26 Example

Schedule from MS Project, 2014-01-06 to 2014-02-10, 9 hours a day, costs in $.
Self

## Calendars

- Standard: Mon-Fri 07:30-12:00, 13:00-17:30; Sat-Sun off. Exceptions (off unless hours are given): 2014-01-20 (MLK Day).

## Resources

| Resource | Rate |
| --- | --- |
| Mete Goktepe | 75 |
| Syed Appas | 25 |
| Nicole Caron | 40 |
| Mike Tiano | 25 |
| Jo Brown | 55 |
| Kevin Kennedy | 75 |
| Large Conference Room | 200 |
| Aaron Con | 25 |
| Small Conference Room | 100 |
| CL User Group | 20 |
| JoLynn Dobney | 40 |
| Nicole Holliday | 40 |
| Eli Bowen | 40 |

## Schedule

| ID | WBS | Task | Type | Duration | Start | Finish | Predecessors | Baseline start | Baseline finish | Baseline duration | Total slack | Resources | Work | Cost | Baseline cost |
| --- | --- | --- | --- | --- | --- | --- | --- | --- | --- | --- | --- | --- | --- | --- | --- |
| 1 | 1 | **RFP Solicitation Process** |  | 24.33d | 2014-01-06 | 2014-02-10 |  | 2014-01-06 | 2014-02-10 | 24.33d | 0d |  | 511h | 27,760 | 27,760 |
| 2 | 1.1 | RFP Solicitation Process begins | milestone | 0d | 2014-01-06 | 2014-01-06 |  | 2014-01-06 | 2014-01-06 | 0d | 0d |  |  |  |  |
| 3 | 1.2 | **RFP Creation** |  | 19.44d | 2014-01-06 | 2014-02-03 |  | 2014-01-06 | 2014-02-03 | 19.44d | 0d |  | 423h | 21,420 | 21,420 |
| 4 | 1.2.1 | RFP Creation Begins | milestone | 0d | 2014-01-06 | 2014-01-06 | 2 | 2014-01-06 | 2014-01-06 | 0d | 0d |  |  |  |  |
| 5 | 1.2.2 | Document Software requirements |  | 8d | 2014-01-06 | 2014-01-16 | 4 | 2014-01-06 | 2014-01-16 | 8d | 0d | CL User Group; JoLynn Dobney; Nicole Holliday [50%] | 180h | 5,760 | 5,760 |
| 6 | 1.2.3 | Define evaluation criteria |  | 2d | 2014-01-16 | 2014-01-21 | 5 | 2014-01-16 | 2014-01-21 | 2d | 0d | Mete Goktepe; Syed Appas; Nicole Caron; Mike Tiano | 72h | 2,970 | 2,970 |
| 7 | 1.2.4 | Identify evaluation team |  | 1d | 2014-01-21 | 2014-01-22 | 6 | 2014-01-21 | 2014-01-22 | 1d | 0d | Syed Appas; Nicole Caron; Jo Brown | 27h | 1,080 | 1,080 |
| 8 | 1.2.5 | Draft RFP |  | 6d | 2014-01-22 | 2014-01-29 | 7 | 2014-01-22 | 2014-01-29 | 6d | 0d | Mete Goktepe; Kevin Kennedy | 90h | 6,750 | 6,750 |
| 9 | 1.2.6 | Review RFP with management and lending reps. |  | 1.11d | 2014-01-29 | 2014-01-30 | 8 | 2014-01-29 | 2014-01-30 | 1.11d | 0d | Mete Goktepe; Kevin Kennedy; Eli Bowen; Large Conference Room | 36h | 3,510 | 3,510 |
| 10 | 1.2.7 | Refine RFP |  | 1.61d | 2014-01-30 | 2014-02-03 | 9 | 2014-01-30 | 2014-02-03 | 1.61d | 0d | Mete Goktepe; Kevin Kennedy | 18h | 1,350 | 1,350 |
| 11 | 1.2.8 | RFP ready to release | milestone | 0d | 2014-02-03 | 2014-02-03 | 10 | 2014-02-03 | 2014-02-03 | 0d | 0d |  |  |  |  |
| 12 | 1.3 | **RFP Release** |  | 4.89d | 2014-02-03 | 2014-02-10 |  | 2014-02-03 | 2014-02-10 | 4.89d | 0d |  | 88h | 6,340 | 6,340 |
| 13 | 1.3.1 | RFP release begins | milestone | 0d | 2014-02-03 | 2014-02-03 | 11 | 2014-02-03 | 2014-02-03 | 0d | 0d |  |  |  |  |
| 14 | 1.3.2 | Identify software suppliers |  | 2.22d | 2014-02-03 | 2014-02-05 | 13 | 2014-02-03 | 2014-02-05 | 2.22d | 0d | Mete Goktepe; Kevin Kennedy | 36h | 2,700 | 2,700 |
| 15 | 1.3.3 | Determine deadline dates for responses |  | 2h | 2014-02-05 | 2014-02-05 | 14 | 2014-02-05 | 2014-02-05 | 2h | 0d | Eli Bowen; Mete Goktepe; Aaron Con | 6h | 280 | 280 |
| 16 | 1.3.4 | Finalize RFP content |  | 6h | 2014-02-05 | 2014-02-06 | 15 | 2014-02-05 | 2014-02-06 | 6h | 0d | Kevin Kennedy | 6h | 450 | 450 |
| 17 | 1.3.5 | Release RFP to target companies |  | 2h | 2014-02-06 | 2014-02-06 | 16 | 2014-02-06 | 2014-02-06 | 2h | 0d | Kevin Kennedy; Mete Goktepe | 4h | 300 | 300 |
| 18 | 1.3.6 | Conduct RFP briefing |  | 1.5d | 2014-02-06 | 2014-02-10 | 17 | 2014-02-06 | 2014-02-10 | 1.5d | 0d | Mete Goktepe; Kevin Kennedy; Nicole Caron; Small Conference Room | 36h | 2,610 | 2,610 |
| 19 | 1.3.7 | RFP release complete | milestone | 0d | 2014-02-10 | 2014-02-10 | 18 | 2014-02-10 | 2014-02-10 | 0d | 0d |  |  |  |  |
| 20 | 1.4 | RFP Solicitation Process complete | milestone | 0d | 2014-02-10 | 2014-02-10 | 19 | 2014-02-10 | 2014-02-10 | 0d | 0d |  |  |  |  |
