# HB WBS Durations

Schedule from MS Project, 2017-01-17 to 2017-07-17, status date 2017-01-18, costs in $, A marks actual dates.

## Calendars

- Standard: Mon-Fri 08:00-12:00, 13:00-17:00; Sat-Sun off.

## Resources

| Resource | Rate | Notes |
| --- | --- | --- |
| Appliance Contractor |  |  |
| Architect | 60 |  |
| Concrete Contractor | 65 |  |
| Drywal Contractor | 58 |  |
| Electric Company |  |  |
| Electric Contractor | 45 |  |
| Fencing Contractor | 55 |  |
| Finish Carpentry Cotnractor | 50 |  |
| Flooring Contractor | 76 |  |
| Framing contractor | 40 |  |
| General contractor | 70 |  |
| Heating and AC contractor | 80 |  |
| Inspector |  |  |
| Insulation contractor | 90 |  |
| Landscape contractor | 40 |  |
| Maid service | 50 |  |
| Masonry contractor | 80 |  |
| Mortgage lender |  |  |
| Owner |  |  |
| Painting contractor | 47 |  |
| Plumbing contractor | 45 |  |
| Roofing contractor | 50 |  |
| Siding conractor | 42 |  |
| Site excavation contractor | 150 |  |
| Appliances |  | Appliances - $7500 |
| Brick facing |  | Brick fencing - $2000 |
| Carpete floor |  | Concrete floor - $2000 |
| Concrete |  | Concrete - $10000 |
| Fencing |  | Deck - $5000 |
| Lumber |  | Lumber - $40000 |
| Lumber hardware |  | Lumber hardware - $7200 |
| Doors |  | Doors - $5000 |
| Errosion control |  | Errosion control - $4000 |
| Excavation |  | Excavation - $10000 |
| Finish - Electrical |  | Finish - Electrical - $1550 |
| Finish - Plumbing |  | Finish - Plumbing - $5200 |
| Insulation |  | Insulation - $2200 |
| Cabinets Molding and trim |  | Molding and trim - $25000 |
| Paint |  | Paint - $800 |
| Permits |  | Permits - $12000 |
| Roofing |  | Roofing - $3400 |
| Rough in electirc |  | Rough in electirc - $1750 |
| Rough in plumbing |  | Rough in plumbing - $3500 |
| Siding |  | Siding - $5900 |
| Sod |  | Sod - $2400 |
| Tile - grout - mortar and etc |  | Tile - grout - mortar and etc - $2400 |
| Windows |  | Windows - $12000 |
| Drywall |  | Drywall - $2500 |

## Schedule

| ID | WBS | Task | Type | Duration | Start | Finish | Predecessors | Complete | Remaining | Total slack | Free slack | Resources | Work | Cost |
| --- | --- | --- | --- | --- | --- | --- | --- | --- | --- | --- | --- | --- | --- | --- |
| 1 | 1 | **Single Family House - Architect Design** |  | 130d | 2017-01-17 A | 2017-07-17 |  |  | 130d | 0d |  |  | 1770h | 267,068 |
| 2 | 1.1 | Start Project Milestone | milestone | 0d | 2017-01-17 A | 2017-01-17 A |  | 100% |  |  |  | General contractor |  |  |
| 3 | 1.2 | **General Conditions** |  | 121d | 2017-01-17 A | 2017-07-04 |  |  | 121d | 9d |  |  | 1562h | 245,948 |
| 4 | 1.2.1 | Finalize plans and develop estimate with owner, architect |  | 10d | 2017-01-17 A | 2017-01-30 | 2 |  | 10d | 0d |  | Architect | 80h | 4,800 |
| 5 | 1.2.2 | Sign contract and notice to proceed |  | 2d | 2017-01-31 | 2017-02-01 | 4 |  |  | 0d |  | Owner; General contractor [50%]; Architect [50%] | 24h | 1,040 |
| 6 | 1.2.3 | **Apply for Permits** |  | 10d | 2017-02-02 | 2017-02-15 |  |  |  | 0d |  |  | 36h | 14,520 |
| 7 | 1.2.3.1 | Secure foundation permit |  | 9d | 2017-02-02 | 2017-02-15 | 5 |  |  | 0d |  | General contractor [5%]; Permits [0.1%] | 3.6h | 2,252 |
| 8 | 1.2.3.2 | Secure framing permit |  | 9d | 2017-02-02 | 2017-02-15 | 5 |  |  | 0d |  | General contractor [5%]; Permits [0.1%] | 3.6h | 2,252 |
| 9 | 1.2.3.3 | Secure electrical permit |  | 9d | 2017-02-02 | 2017-02-15 | 5 |  |  | 0d |  | General contractor [10%]; Permits [0.1%] | 7.2h | 2,504 |
| 10 | 1.2.3.4 | Secure plumbing permit |  | 9d | 2017-02-02 | 2017-02-15 | 5 |  |  | 0d |  | General contractor [10%]; Permits [0.1%] | 7.2h | 2,504 |
| 11 | 1.2.3.5 | Secure HVAC permit |  | 9d | 2017-02-02 | 2017-02-15 | 5 |  |  | 0d |  | General contractor [10%]; Permits [0.1%] | 7.2h | 2,504 |
| 12 | 1.2.3.6 | Secure miscellaneous permits |  | 9d | 2017-02-02 | 2017-02-15 | 5 |  |  | 108d |  | General contractor [10%]; Permits [0.1%] | 7.2h | 2,504 |
| 13 | 1.2.4 | **Site Work** |  | 3d | 2017-02-16 | 2017-02-20 |  |  |  | 0d |  |  | 24h | 11,480 |
| 14 | 1.2.4.1 | Clear and grub lot |  | 1d | 2017-02-16 | 2017-02-16 | 7, 8, 9, 10, 11 |  |  | 0d |  | Site excavation contractor; Excavation [0.1%] | 8h | 5,200 |
| 15 | 1.2.4.2 | Install temporary power service |  | 1d | 2017-02-17 | 2017-02-17 | 14 |  |  | 105d | 0d | Electric Company [50%]; General contractor [50%] | 8h | 280 |
| 16 | 1.2.4.3 | Install underground utilities |  | 1d | 2017-02-20 | 2017-02-20 | 15 |  |  | 105d |  | Site excavation contractor; Excavation [0.1%] | 8h | 6,000 |
| 17 | 1.2.5 | **Foundation** |  | 22d | 2017-02-17 | 2017-03-20 |  |  |  | 0d |  |  | 114h | 19,970 |
| 18 | 1.2.5.1 | Excavate for foundations |  | 1d | 2017-02-17 | 2017-02-17 | 14 |  |  | 0d |  | Site excavation contractor; Excavation [0.1%] | 8h | 5,200 |
| 19 | 1.2.5.2 | Form basement walls |  | 5d | 2017-02-20 | 2017-02-28 | 18 |  |  | 0d |  | Concrete Contractor; Concrete [0.1%] | 40h | 5,600 |
| 20 | 1.2.5.3 | Place concrete for foundations & basement walls |  | 1d | 2017-03-01 | 2017-03-01 | 19 |  |  | 0d |  | Concrete Contractor; Concrete [0.1%] | 8h | 3,520 |
| 21 | 1.2.5.4 | Cure basement walls for 7 days |  | 7d | 2017-03-02 | 2017-03-10 | 20 |  |  | 0d |  | Concrete Contractor [25%] | 14h | 910 |
| 22 | 1.2.5.5 | Strip basement wall forms |  | 1d | 2017-03-13 | 2017-03-13 | 21 |  |  | 0d |  | Concrete Contractor; Lumber [0.1%] | 8h | 1,520 |
| 23 | 1.2.5.6 | Waterproof/insulate basement walls |  | 2d | 2017-03-14 | 2017-03-15 | 22 |  |  | 0d |  | Insulation contractor; Insulation [0.1%] | 16h | 1,740 |
| 24 | 1.2.5.7 | Perform foundation inspection |  | 1d | 2017-03-16 | 2017-03-16 | 23 |  |  | 0d |  | Inspector; General contractor [50%] | 12h | 280 |
| 25 | 1.2.5.8 | Backfill foundation |  | 2d | 2017-03-17 | 2017-03-20 | 24 |  |  | 0d |  | Site excavation contractor [50%] | 8h | 1,200 |

| ID | WBS | Task | Duration | Start | Finish | Predecessors | Total slack | Free slack | Resources | Work | Cost |
| --- | --- | --- | --- | --- | --- | --- | --- | --- | --- | --- | --- |
| 26 | 1.2.6 | **Framing** | 22d | 2017-03-21 | 2017-04-19 |  | 0d |  |  | 164h | 51,360 |
| 27 | 1.2.6.1 | Install 1st floor joists | 2d | 2017-03-21 | 2017-03-22 | 25 | 0d |  | Framing contractor; Lumber [0.1%] | 16h | 4,640 |
| 28 | 1.2.6.2 | Lay 1st floor decking | 2d | 2017-03-23 | 2017-03-24 | 27 | 0d |  | Framing contractor; Lumber [0.1%] | 16h | 5,640 |
| 29 | 1.2.6.3 | Frame 1st floor walls | 2d | 2017-03-27 | 2017-03-30 | 28 | 0d |  | Framing contractor; Lumber [0.1%] | 16h | 5,640 |
| 30 | 1.2.6.4 | Frame 1st floor corners | 1d | 2017-03-31 | 2017-03-31 | 29 | 0d |  | Framing contractor; Lumber [0.1%] | 8h | 2,320 |
| 31 | 1.2.6.5 | Install 2nd floor joists | 2d | 2017-04-03 | 2017-04-04 | 30 | 0d |  | Framing contractor; Lumber [0.1%] | 16h | 4,640 |
| 32 | 1.2.6.6 | Frame 2nd floor decking | 2d | 2017-04-05 | 2017-04-06 | 31 | 0d |  | Framing contractor; Lumber [0.1%] | 16h | 5,640 |
| 33 | 1.2.6.7 | Frame 2nd floor walls | 3d | 2017-04-07 | 2017-04-11 | 32 | 0d |  | Framing contractor; Lumber [0.1%] | 24h | 5,960 |
| 34 | 1.2.6.8 | Frame 2nd floor corners | 2d | 2017-04-12 | 2017-04-13 | 33 | 0d |  | Framing contractor; Lumber [0.1%] | 16h | 5,640 |
| 35 | 1.2.6.9 | Complete roof framing | 3d | 2017-04-14 | 2017-04-18 | 34 | 0d |  | Framing contractor; Lumber [0.1%] | 24h | 10,960 |
| 36 | 1.2.6.10 | Conduct framing inspection | 1d | 2017-04-19 | 2017-04-19 | 35 | 0d |  | Inspector; General contractor [50%] | 12h | 280 |
| 37 | 1.2.7 | **Dry In** | 4d | 2017-04-20 | 2017-04-25 |  | 53d |  |  | 192h | 32,088 |
| 38 | 1.2.7.1 | Install 1st floor sheathing | 1d | 2017-04-20 | 2017-04-20 | 36 | 53d | 0d | Framing contractor [200%]; Lumber [0.1%] | 16h | 2,140 |
| 39 | 1.2.7.2 | Install 2nd floor sheathing | 1d | 2017-04-20 | 2017-04-20 | 36 | 60d | 0d | Framing contractor [300%]; Lumber [0.1%] | 24h | 2,460 |
| 40 | 1.2.7.3 | Install roof decking | 2d | 2017-04-20 | 2017-04-21 | 36 | 59d | 0d | Roofing contractor [300%]; Roofing [0.1%] | 48h | 5,800 |
| 41 | 1.2.7.4 | Install felt, flashing and shingles | 2d | 2017-04-24 | 2017-04-25 | 40 | 59d |  | Siding conractor [400%]; Siding [0.1%] | 64h | 4,688 |
| 42 | 1.2.7.5 | Hang 1st floor exterior doors | 1d | 2017-04-21 | 2017-04-21 | 38 | 61d |  | Finish Carpentry Cotnractor; Doors [0.1%] | 8h | 3,400 |
| 43 | 1.2.7.6 | Install 1st floor windows | 1d | 2017-04-21 | 2017-04-24 | 38 | 53d | 0d | Finish Carpentry Cotnractor [200%]; Windows [0.1%] | 16h | 7,800 |
| 44 | 1.2.7.7 | Install 2nd floor windows | 1d | 2017-04-21 | 2017-04-24 | 39 | 60d |  | Finish Carpentry Cotnractor [200%]; Windows [0.1%] | 16h | 5,800 |
| 45 | 1.2.8 | **Exterior Finishes** | 7d | 2017-04-25 | 2017-05-03 |  | 53d |  |  | 160h | 15,052 |
| 46 | 1.2.8.1 | Complete exterior brick | 4d | 2017-04-25 | 2017-04-28 | 43 | 53d | 0d | Masonry contractor [200%]; Brick facing [0.1%] | 64h | 8,520 |
| 47 | 1.2.8.2 | Complete exterior siding | 3d | 2017-05-01 | 2017-05-03 | 46 | 53d |  | Siding conractor [400%]; Siding [0.1%] | 96h | 6,532 |
| 48 | 1.2.9 | **Utility Rough-B97Ins and Complete Concrete** | 23d | 2017-04-20 | 2017-05-22 |  | 0d |  |  | 216h | 17,506 |
| 49 | 1.2.9.1 | Rough-in plumbing | 5d | 2017-04-20 | 2017-04-26 | 36 | 0d |  | Plumbing contractor; Rough in plumbing [0.1%] | 40h | 5,300 |
| 50 | 1.2.9.2 | Conduct rough-in plumbing inspection | 1d | 2017-04-27 | 2017-04-27 | 49 | 0d |  | Inspector [30%]; General contractor [50%] | 6.4h | 280 |
| 51 | 1.2.9.3 | Place concrete for basement floor | 5d | 2017-04-28 | 2017-05-04 | 50 | 0d |  | Concrete Contractor; Concrete [0.1%] | 40h | 3,800 |
| 52 | 1.2.9.4 | Rough-in electrical | 5d | 2017-05-05 | 2017-05-11 | 51 | 0d |  | Electric Contractor [200%]; Rough in electirc [0.1%] | 80h | 4,800 |
| 53 | 1.2.9.5 | Conduct rough-in electrical inspection | 1d | 2017-05-12 | 2017-05-12 | 52 | 0d |  | Inspector [30%]; General contractor [30%] | 4.8h | 168 |
| 54 | 1.2.9.6 | Rough-in HVAC | 3d | 2017-05-15 | 2017-05-17 | 53 | 0d |  | Heating and AC contractor | 24h | 1,920 |
| 55 | 1.2.9.7 | Conduct rough-in HVAC inspection | 1d | 2017-05-18 | 2017-05-18 | 54 | 0d |  | Inspector [30%]; General contractor [30%] | 4.8h | 168 |
| 56 | 1.2.9.8 | Rough-in communication - phone, cable, computer, alarm | 2d | 2017-05-19 | 2017-05-22 | 55 | 0d |  | Electric Contractor; Finish - Electrical [0.1%] | 16h | 1,070 |

| ID | WBS | Task | Duration | Start | Finish | Predecessors | Total slack | Free slack | Resources | Work | Cost |
| --- | --- | --- | --- | --- | --- | --- | --- | --- | --- | --- | --- |
| 57 | 1.2.10 | **Interior Finishes** | 31d | 2017-05-23 | 2017-07-04 |  | 0d |  |  | 552h | 78,132 |
| 58 | 1.2.10.1 | **Insulation** | 4d | 2017-05-23 | 2017-05-26 |  | 0d |  |  | 32h | 4,340 |
| 59 | 1.2.10.1.1 | Place wall insulation - 1st floor | 1d | 2017-05-23 | 2017-05-23 | 56 | 0d |  | Insulation contractor; Insulation [0.1%] | 8h | 1,320 |
| 60 | 1.2.10.1.2 | Place wall insulation - 2nd floor | 1d | 2017-05-24 | 2017-05-24 | 59 | 0d |  | Insulation contractor; Insulation [0.1%] | 8h | 1,320 |
| 61 | 1.2.10.1.3 | Place ceiling insulation - 2nd floor | 1d | 2017-05-25 | 2017-05-25 | 60 | 0d |  | Insulation contractor; Insulation [0.1%] | 8h | 1,420 |
| 62 | 1.2.10.1.4 | Conduct insulation inspection | 1d | 2017-05-26 | 2017-05-26 | 61, 59, 60 | 0d |  | Inspector [50%]; General contractor [50%] | 8h | 280 |
| 63 | 1.2.10.2 | **Drywall** | 10d | 2017-05-29 | 2017-06-09 |  | 0d |  |  | 144h | 10,852 |
| 64 | 1.2.10.2.1 | Install drywall - 1st floor walls | 2d | 2017-05-29 | 2017-05-30 | 62 | 0d |  | Drywal Contractor [200%]; Drywall [0.1%] | 32h | 2,256 |
| 65 | 1.2.10.2.2 | Install drywall - 1st floor overhead | 2d | 2017-05-31 | 2017-06-01 | 64 | 0d |  | Drywal Contractor [200%]; Drywall [0.1%] | 32h | 2,256 |
| 66 | 1.2.10.2.3 | Install drywall 2nd floor walls | 2d | 2017-06-02 | 2017-06-05 | 65 | 0d |  | Drywal Contractor [200%]; Drywall [0.1%] | 32h | 2,256 |
| 67 | 1.2.10.2.4 | Install drywall 2nd floor overhead | 2d | 2017-06-06 | 2017-06-07 | 66 | 0d |  | Drywal Contractor [200%]; Drywall [0.1%] | 32h | 2,256 |
| 68 | 1.2.10.2.5 | Tape and float 1st floor drywall | 1d | 2017-06-08 | 2017-06-08 | 67 | 0d |  | Drywal Contractor; Drywall [0.1%] | 8h | 864 |
| 69 | 1.2.10.2.6 | Tape and float 2nd floor drywall | 1d | 2017-06-09 | 2017-06-09 | 68 | 0d |  | Drywal Contractor; Drywall [0.1%] | 8h | 964 |
| 70 | 1.2.10.3 | **Paint and Wallpaper** | 8d | 2017-06-12 | 2017-06-21 |  | 0d |  |  | 104h | 5,688 |
| 71 | 1.2.10.3.1 | Texture all except entry and kitchen - 1st floor | 1d | 2017-06-12 | 2017-06-12 | 69 | 0d |  | Painting contractor [200%]; Paint [0.1%] | 16h | 882 |
| 72 | 1.2.10.3.2 | Paint all except entry and kitchen - 1st floor | 1d | 2017-06-13 | 2017-06-13 | 71 | 0d |  | Painting contractor [200%]; Paint [0.1%] | 16h | 882 |
| 73 | 1.2.10.3.3 | Hang wallpaper entry and kitchen - 1st floor | 1d | 2017-06-14 | 2017-06-14 | 72 | 17d | 0d | Painting contractor; Paint [0.1%] | 8h | 506 |
| 74 | 1.2.10.3.4 | Texture all - 2nd floor | 1d | 2017-06-15 | 2017-06-15 | 73 | 17d | 0d | Painting contractor; Paint [0.1%] | 8h | 506 |
| 75 | 1.2.10.3.5 | Paint all - 2nd floor | 1d | 2017-06-16 | 2017-06-16 | 74 | 17d | 0d | Painting contractor; Paint [0.1%] | 8h | 526 |
| 76 | 1.2.10.3.6 | Paint exterior siding & trim work | 3d | 2017-06-19 | 2017-06-21 | 75 | 18d |  | Painting contractor [200%]; Paint [0.1%] | 48h | 2,386 |
| 77 | 1.2.10.4 | **Cabinets** | 6d | 2017-06-14 | 2017-06-21 |  | 0d |  |  | 72h | 28,600 |
| 78 | 1.2.10.4.1 | Install 1st floor - kitchen cabinets | 2d | 2017-06-14 | 2017-06-15 | 72 | 20d | 2d | Finish Carpentry Cotnractor [200%]; Cabinets Molding and trim [0.1%] | 32h | 7,850 |
| 79 | 1.2.10.4.2 | Install 1st floor - master bath and guest cabinets | 1d | 2017-06-14 | 2017-06-14 | 72 | 0d |  | Finish Carpentry Cotnractor [200%]; Cabinets Molding and trim [0.1%] | 16h | 7,050 |
| 80 | 1.2.10.4.3 | Install 2nd floor - hall bath and private bath cabinets | 1d | 2017-06-19 | 2017-06-19 | 75 | 17d | 0d | Finish Carpentry Cotnractor [200%]; Cabinets Molding and trim [0.1%] | 16h | 10,800 |
| 81 | 1.2.10.4.4 | Install chair rails, crown moldings, trim | 1d | 2017-06-20 | 2017-06-21 | 80, 78, 79 | 18d |  | Finish Carpentry Cotnractor; Cabinets Molding and trim [0.1%] | 8h | 2,900 |

| ID | WBS | Task | Duration | Start | Finish | Predecessors | Total slack | Free slack | Resources | Work | Cost |
| --- | --- | --- | --- | --- | --- | --- | --- | --- | --- | --- | --- |
| 82 | 1.2.10.5 | **Finish Plumbing** | 6d | 2017-06-15 | 2017-06-22 |  | 0d |  |  | 26h | 6,230 |
| 83 | 1.2.10.5.1 | Complete 1st floor - kitchen plumbing | 1d | 2017-06-15 | 2017-06-15 | 79 | 0d |  | Plumbing contractor [50%]; Finish - Plumbing [0.1%] | 4h | 1,910 |
| 84 | 1.2.10.5.2 | Complete 1st floor - master bath and guest plumbing | 2d | 2017-06-16 | 2017-06-21 | 83 | 17d | 0d | Plumbing contractor [50%]; Finish - Plumbing [0.1%] | 8h | 2,090 |
| 85 | 1.2.10.5.3 | Complete 2nd floor - hall bath and private bath plumbing | 2d | 2017-06-20 | 2017-06-21 | 80 | 17d | 0d | Plumbing contractor [50%]; Finish - Plumbing [0.1%] | 8h | 2,090 |
| 86 | 1.2.10.5.4 | Conduct finish plumbing inspection | 1d | 2017-06-22 | 2017-06-22 | 85, 83, 84 | 17d |  | Inspector [50%]; General contractor [25%] | 6h | 140 |
| 87 | 1.2.10.6 | **Finish Electrical** | 5d | 2017-06-15 | 2017-06-21 |  | 1d |  |  | 44h | 3,470 |
| 88 | 1.2.10.6.1 | Complete 1st floor circuits to service panel | 1d | 2017-06-15 | 2017-06-15 | 79 | 22d |  | Electric Contractor; Finish - Electrical [0.1%] | 8h | 960 |
| 89 | 1.2.10.6.2 | Complete 2nd floor circuits to service panel | 1d | 2017-06-16 | 2017-06-16 | 83 | 0d |  | Electric Contractor; Finish - Electrical [0.1%] | 8h | 960 |
| 90 | 1.2.10.6.3 | Conduct finish electrical inspection | 1d | 2017-06-19 | 2017-06-19 | 89 | 0d |  | Inspector; General contractor [50%] | 12h | 280 |
| 91 | 1.2.10.6.4 | Complete communications wiring - phone, cable, computer, alarm | 2d | 2017-06-20 | 2017-06-21 | 90 | 0d |  | Electric Contractor; Finish - Electrical [0.1%] | 16h | 1,270 |
| 92 | 1.2.10.7 | **Finish HVAC** | 2d | 2017-06-22 | 2017-06-23 |  | 0d |  |  | 42h | 2,700 |
| 93 | 1.2.10.7.1 | Complete 1st floor - zone 1 HVAC | 1d | 2017-06-22 | 2017-06-22 | 91 | 0d |  | Heating and AC contractor [200%] | 16h | 1,280 |
| 94 | 1.2.10.7.2 | Complete 2nd floor - zone 2 HVAC | 1d | 2017-06-22 | 2017-06-22 | 91 | 0d |  | Heating and AC contractor [200%] | 16h | 1,280 |
| 95 | 1.2.10.7.3 | Conduct HVAC inspection | 1d | 2017-06-23 | 2017-06-23 | 93, 94 | 0d |  | Inspector; General contractor [25%] | 10h | 140 |
| 96 | 1.2.10.8 | **Carpet, Tile and Appliances** | 7d | 2017-06-26 | 2017-07-04 |  | 0d |  |  | 88h | 16,252 |
| 97 | 1.2.10.8.1 | Tile entry, kitchen and baths | 3d | 2017-06-26 | 2017-06-28 | 95 | 0d |  | Masonry contractor; Tile - grout - mortar and etc [0.1%] | 24h | 4,320 |
| 98 | 1.2.10.8.2 | Carpet 1st floor | 1d | 2017-06-29 | 2017-06-29 | 97 | 0d |  | Flooring Contractor [200%]; Carpete floor [0.1%] | 16h | 2,216 |
| 99 | 1.2.10.8.3 | Carpet 2nd floor | 1d | 2017-06-30 | 2017-06-30 | 98 | 0d |  | Flooring Contractor [200%]; Carpete floor [0.1%] | 16h | 2,216 |
| 100 | 1.2.10.8.4 | Install appliances | 2d | 2017-07-03 | 2017-07-04 | 99, 97, 98 | 0d |  | Appliance Contractor [200%]; Appliances [0.1%] | 32h | 7,500 |
| 101 | 1.3 | **Landscaping and Grounds Work** | 3d | 2017-07-05 | 2017-07-07 |  | 0d |  |  | 136h | 17,520 |
| 102 | 1.3.1 | Pour concrete driveway and sidewalks | 2d | 2017-07-05 | 2017-07-06 | 100 | 0d |  | Concrete Contractor [200%]; Concrete [0.1%] | 32h | 4,880 |
| 103 | 1.3.2 | Install backyard fence | 3d | 2017-07-05 | 2017-07-07 | 100 | 6d |  | Fencing Contractor [300%]; Fencing [0.1%] | 72h | 8,960 |
| 104 | 1.3.3 | Sod and complete plantings - front yard | 1d | 2017-07-07 | 2017-07-07 | 102 | 6d |  | Landscape contractor [200%]; Sod [0.1%] | 16h | 1,440 |
| 105 | 1.3.4 | Sod and complete plantings - backyard | 1d | 2017-07-07 | 2017-07-07 | 102 | 0d |  | Landscape contractor [200%]; Sod [0.1%] | 16h | 2,240 |

| ID | WBS | Task | Type | Duration | Start | Finish | Predecessors | Total slack | Resources | Work | Cost |
| --- | --- | --- | --- | --- | --- | --- | --- | --- | --- | --- | --- |
| 106 | 1.4 | **Final Acceptance** |  | 6d | 2017-07-10 | 2017-07-17 |  | 0d |  | 72h | 3,600 |
| 107 | 1.4.1 | Complete final inspection for certificate of occupancy |  | 1d | 2017-07-10 | 2017-07-10 | 105 | 0d | Inspector; General contractor | 16h | 560 |
| 108 | 1.4.2 | Cleanup for occupancy |  | 1d | 2017-07-11 | 2017-07-11 | 107 | 0d | Maid service [200%] | 16h | 800 |
| 109 | 1.4.3 | Perform final walk-through inspection |  | 1d | 2017-07-12 | 2017-07-12 | 108 | 0d | Owner; General contractor | 16h | 560 |
| 110 | 1.4.4 | Complete punch list items |  | 3d | 2017-07-13 | 2017-07-17 | 109 | 0d | General contractor | 24h | 1,680 |
| 111 | 1.5 | End Project Milestone | milestone | 0d | 2017-07-17 | 2017-07-17 | 110 | 0d |  |  |  |
