# HB WBS Durations

Schedule from MS Project, 2017-01-17 to 2017-09-07, status date 2017-01-18, A marks actual dates.

## Calendars

- Standard: Mon-Fri 08:00-12:00, 13:00-17:00; Sat-Sun off.

## Schedule

| ID | WBS | Task | Type | Duration | Start | Finish | Predecessors | Complete | Remaining | Total slack | Free slack |
| --- | --- | --- | --- | --- | --- | --- | --- | --- | --- | --- | --- |
| 1 | 1 | **Single Family House - Architect Design** |  | 168d | 2017-01-17 A | 2017-09-07 |  | 1% | 166.8d | 0d |  |
| 2 | 1.1 | Start Project Milestone | milestone | 0d | 2017-01-17 A | 2017-01-17 A |  | 100% |  |  |  |
| 3 | 1.2 | **General Conditions** |  | 157d | 2017-01-17 A | 2017-08-23 |  | 1% | 155.82d | 11d |  |
| 4 | 1.2.1 | Finalize plans and develop estimate with owner, architect |  | 20d | 2017-01-17 A | 2017-02-13 | 2 | 10% | 18d | 0d |  |
| 5 | 1.2.2 | Sign contract and notice to proceed |  | 1d | 2017-02-14 | 2017-02-14 | 4 |  |  | 0d |  |
| 6 | 1.2.3 | **Apply for Permits** |  | 10d | 2017-02-15 | 2017-02-28 |  |  |  | 0d |  |
| 7 | 1.2.3.1 | Secure foundation permit |  | 10d | 2017-02-15 | 2017-02-28 | 5 |  |  | 0d |  |
| 8 | 1.2.3.2 | Secure framing permit |  | 10d | 2017-02-15 | 2017-02-28 | 5 |  |  | 0d |  |
| 9 | 1.2.3.3 | Secure electrical permit |  | 10d | 2017-02-15 | 2017-02-28 | 5 |  |  | 0d |  |
| 10 | 1.2.3.4 | Secure plumbing permit |  | 10d | 2017-02-15 | 2017-02-28 | 5 |  |  | 0d |  |
| 11 | 1.2.3.5 | Secure HVAC permit |  | 10d | 2017-02-15 | 2017-02-28 | 5 |  |  | 0d |  |
| 12 | 1.2.3.6 | Secure miscellaneous permits |  | 10d | 2017-02-15 | 2017-02-28 | 5 |  |  | 137d |  |
| 13 | 1.2.4 | **Site Work** |  | 3d | 2017-03-01 | 2017-03-03 |  |  |  | 0d |  |
| 14 | 1.2.4.1 | Clear and grub lot |  | 1d | 2017-03-01 | 2017-03-01 | 7, 8, 9, 10, 11 |  |  | 0d |  |
| 15 | 1.2.4.2 | Install temporary power service |  | 1d | 2017-03-02 | 2017-03-02 | 14 |  |  | 134d | 0d |
| 16 | 1.2.4.3 | Install underground utilities |  | 1d | 2017-03-03 | 2017-03-03 | 15 |  |  | 134d |  |
| 17 | 1.2.5 | **Foundation** |  | 42d | 2017-03-02 | 2017-04-28 |  |  |  | 0d |  |
| 18 | 1.2.5.1 | Excavate for foundations |  | 3d | 2017-03-02 | 2017-03-06 | 14 |  |  | 0d |  |
| 19 | 1.2.5.2 | Form basement walls |  | 13d | 2017-03-07 | 2017-03-23 | 18 |  |  | 0d |  |
| 20 | 1.2.5.3 | Place concrete for foundations & basement walls |  | 12d | 2017-03-24 | 2017-04-10 | 19 |  |  | 0d |  |
| 21 | 1.2.5.4 | Cure basement walls for 7 days |  | 7d | 2017-04-11 | 2017-04-19 | 20 |  |  | 0d |  |
| 22 | 1.2.5.5 | Strip basement wall forms |  | 2d | 2017-04-20 | 2017-04-21 | 21 |  |  | 0d |  |
| 23 | 1.2.5.6 | Waterproof/insulate basement walls |  | 2d | 2017-04-24 | 2017-04-25 | 22 |  |  | 0d |  |
| 24 | 1.2.5.7 | Perform foundation inspection |  | 1d | 2017-04-26 | 2017-04-26 | 23 |  |  | 0d |  |
| 25 | 1.2.5.8 | Backfill foundation |  | 2d | 2017-04-27 | 2017-04-28 | 24 |  |  | 0d |  |

| ID | WBS | Task | Duration | Start | Finish | Predecessors | Total slack | Free slack |
| --- | --- | --- | --- | --- | --- | --- | --- | --- |
| 26 | 1.2.6 | **Framing** | 22d | 2017-05-01 | 2017-05-30 |  | 0d |  |
| 27 | 1.2.6.1 | Install 1st floor joists | 2d | 2017-05-01 | 2017-05-02 | 25 | 0d |  |
| 28 | 1.2.6.2 | Lay 1st floor decking | 2d | 2017-05-03 | 2017-05-04 | 27 | 0d |  |
| 29 | 1.2.6.3 | Frame 1st floor walls | 4d | 2017-05-05 | 2017-05-10 | 28 | 0d |  |
| 30 | 1.2.6.4 | Frame 1st floor corners | 1d | 2017-05-11 | 2017-05-11 | 29 | 0d |  |
| 31 | 1.2.6.5 | Install 2nd floor joists | 2d | 2017-05-12 | 2017-05-15 | 30 | 0d |  |
| 32 | 1.2.6.6 | Frame 2nd floor decking | 2d | 2017-05-16 | 2017-05-17 | 31 | 0d |  |
| 33 | 1.2.6.7 | Frame 2nd floor walls | 3d | 2017-05-18 | 2017-05-22 | 32 | 0d |  |
| 34 | 1.2.6.8 | Frame 2nd floor corners | 2d | 2017-05-23 | 2017-05-24 | 33 | 0d |  |
| 35 | 1.2.6.9 | Complete roof framing | 3d | 2017-05-25 | 2017-05-29 | 34 | 0d |  |
| 36 | 1.2.6.10 | Conduct framing inspection | 1d | 2017-05-30 | 2017-05-30 | 35 | 0d |  |
| 37 | 1.2.7 | **Dry In** | 6d | 2017-05-31 | 2017-06-07 |  | 47d |  |
| 38 | 1.2.7.1 | Install 1st floor sheathing | 3d | 2017-05-31 | 2017-06-02 | 36 | 47d | 0d |
| 39 | 1.2.7.2 | Install 2nd floor sheathing | 3d | 2017-05-31 | 2017-06-02 | 36 | 66d | 0d |
| 40 | 1.2.7.3 | Install roof decking | 3d | 2017-05-31 | 2017-06-02 | 36 | 66d | 0d |
| 41 | 1.2.7.4 | Install felt, flashing and shingles | 3d | 2017-06-05 | 2017-06-07 | 40 | 66d |  |
| 42 | 1.2.7.5 | Hang 1st floor exterior doors | 1d | 2017-06-05 | 2017-06-05 | 38 | 68d |  |
| 43 | 1.2.7.6 | Install 1st floor windows | 3d | 2017-06-05 | 2017-06-07 | 38 | 47d | 0d |
| 44 | 1.2.7.7 | Install 2nd floor windows | 3d | 2017-06-05 | 2017-06-07 | 39 | 66d |  |
| 45 | 1.2.8 | **Exterior Finishes** | 19d | 2017-06-08 | 2017-07-04 |  | 47d |  |
| 46 | 1.2.8.1 | Complete exterior brick | 16d | 2017-06-08 | 2017-06-29 | 43 | 47d | 0d |
| 47 | 1.2.8.2 | Complete exterior siding | 3d | 2017-06-30 | 2017-07-04 | 46 | 47d |  |
| 48 | 1.2.9 | **Utility Rough-B97Ins and Complete Concrete** | 29d | 2017-05-31 | 2017-07-10 |  | 0d |  |
| 49 | 1.2.9.1 | Rough-in plumbing | 5d | 2017-05-31 | 2017-06-06 | 36 | 0d |  |
| 50 | 1.2.9.2 | Conduct rough-in plumbing inspection | 1d | 2017-06-07 | 2017-06-07 | 49 | 0d |  |
| 51 | 1.2.9.3 | Place concrete for basement floor | 11d | 2017-06-08 | 2017-06-22 | 50 | 0d |  |
| 52 | 1.2.9.4 | Rough-in electrical | 5d | 2017-06-23 | 2017-06-29 | 51 | 0d |  |
| 53 | 1.2.9.5 | Conduct rough-in electrical inspection | 1d | 2017-06-30 | 2017-06-30 | 52 | 0d |  |
| 54 | 1.2.9.6 | Rough-in HVAC | 3d | 2017-07-03 | 2017-07-05 | 53 | 0d |  |
| 55 | 1.2.9.7 | Conduct rough-in HVAC inspection | 1d | 2017-07-06 | 2017-07-06 | 54 | 0d |  |
| 56 | 1.2.9.8 | Rough-in communication - phone, cable, computer, alarm | 2d | 2017-07-07 | 2017-07-10 | 55 | 0d |  |

| ID | WBS | Task | Duration | Start | Finish | Predecessors | Total slack | Free slack |
| --- | --- | --- | --- | --- | --- | --- | --- | --- |
| 57 | 1.2.10 | **Interior Finishes** | 32d | 2017-07-11 | 2017-08-23 |  | 0d |  |
| 58 | 1.2.10.1 | **Insulation** | 4d | 2017-07-11 | 2017-07-14 |  | 0d |  |
| 59 | 1.2.10.1.1 | Place wall insulation - 1st floor | 1d | 2017-07-11 | 2017-07-11 | 56 | 0d |  |
| 60 | 1.2.10.1.2 | Place wall insulation - 2nd floor | 1d | 2017-07-12 | 2017-07-12 | 59 | 0d |  |
| 61 | 1.2.10.1.3 | Place ceiling insulation - 2nd floor | 1d | 2017-07-13 | 2017-07-13 | 60 | 0d |  |
| 62 | 1.2.10.1.4 | Conduct insulation inspection | 1d | 2017-07-14 | 2017-07-14 | 61, 59, 60 | 0d |  |
| 63 | 1.2.10.2 | **Drywall** | 10d | 2017-07-17 | 2017-07-28 |  | 0d |  |
| 64 | 1.2.10.2.1 | Install drywall - 1st floor walls | 2d | 2017-07-17 | 2017-07-18 | 62 | 0d |  |
| 65 | 1.2.10.2.2 | Install drywall - 1st floor overhead | 2d | 2017-07-19 | 2017-07-20 | 64 | 0d |  |
| 66 | 1.2.10.2.3 | Install drywall 2nd floor walls | 2d | 2017-07-21 | 2017-07-24 | 65 | 0d |  |
| 67 | 1.2.10.2.4 | Install drywall 2nd floor overhead | 2d | 2017-07-25 | 2017-07-26 | 66 | 0d |  |
| 68 | 1.2.10.2.5 | Tape and float 1st floor drywall | 1d | 2017-07-27 | 2017-07-27 | 67 | 0d |  |
| 69 | 1.2.10.2.6 | Tape and float 2nd floor drywall | 1d | 2017-07-28 | 2017-07-28 | 68 | 0d |  |
| 70 | 1.2.10.3 | **Paint and Wallpaper** | 9d | 2017-07-31 | 2017-08-10 |  | 0d |  |
| 71 | 1.2.10.3.1 | Texture all except entry and kitchen - 1st floor | 1d | 2017-07-31 | 2017-07-31 | 69 | 0d |  |
| 72 | 1.2.10.3.2 | Paint all except entry and kitchen - 1st floor | 1d | 2017-08-01 | 2017-08-01 | 71 | 0d |  |
| 73 | 1.2.10.3.3 | Hang wallpaper entry and kitchen - 1st floor | 1d | 2017-08-02 | 2017-08-02 | 72 | 20d | 0d |
| 74 | 1.2.10.3.4 | Texture all - 2nd floor | 1d | 2017-08-03 | 2017-08-03 | 73 | 20d | 0d |
| 75 | 1.2.10.3.5 | Paint all - 2nd floor | 1d | 2017-08-04 | 2017-08-04 | 74 | 20d | 0d |
| 76 | 1.2.10.3.6 | Paint exterior siding & trim work | 4d | 2017-08-07 | 2017-08-10 | 75 | 20d |  |
| 77 | 1.2.10.4 | **Cabinets** | 6d | 2017-08-02 | 2017-08-09 |  | 0d |  |
| 78 | 1.2.10.4.1 | Install 1st floor - kitchen cabinets | 2d | 2017-08-02 | 2017-08-03 | 72 | 23d | 2d |
| 79 | 1.2.10.4.2 | Install 1st floor - master bath and guest cabinets | 1d | 2017-08-02 | 2017-08-02 | 72 | 0d |  |
| 80 | 1.2.10.4.3 | Install 2nd floor - hall bath and private bath cabinets | 1d | 2017-08-07 | 2017-08-07 | 75 | 20d | 0d |
| 81 | 1.2.10.4.4 | Install chair rails, crown moldings, trim | 2d | 2017-08-08 | 2017-08-09 | 80, 78, 79 | 21d |  |

| ID | WBS | Task | Duration | Start | Finish | Predecessors | Total slack | Free slack |
| --- | --- | --- | --- | --- | --- | --- | --- | --- |
| 82 | 1.2.10.5 | **Finish Plumbing** | 6d | 2017-08-03 | 2017-08-10 |  | 0d |  |
| 83 | 1.2.10.5.1 | Complete 1st floor - kitchen plumbing | 1d | 2017-08-03 | 2017-08-03 | 79 | 0d |  |
| 84 | 1.2.10.5.2 | Complete 1st floor - master bath and guest plumbing | 2d | 2017-08-04 | 2017-08-07 | 83 | 22d | 2d |
| 85 | 1.2.10.5.3 | Complete 2nd floor - hall bath and private bath plumbing | 2d | 2017-08-08 | 2017-08-09 | 80 | 20d | 0d |
| 86 | 1.2.10.5.4 | Conduct finish plumbing inspection | 1d | 2017-08-10 | 2017-08-10 | 85, 83, 84 | 20d |  |
| 87 | 1.2.10.6 | **Finish Electrical** | 5d | 2017-08-03 | 2017-08-09 |  | 1d |  |
| 88 | 1.2.10.6.1 | Complete 1st floor circuits to service panel | 1d | 2017-08-03 | 2017-08-03 | 79 | 25d |  |
| 89 | 1.2.10.6.2 | Complete 2nd floor circuits to service panel | 1d | 2017-08-04 | 2017-08-04 | 83 | 0d |  |
| 90 | 1.2.10.6.3 | Conduct finish electrical inspection | 1d | 2017-08-07 | 2017-08-07 | 89 | 0d |  |
| 91 | 1.2.10.6.4 | Complete communications wiring - phone, cable, computer, alarm | 2d | 2017-08-08 | 2017-08-09 | 90 | 0d |  |
| 92 | 1.2.10.7 | **Finish HVAC** | 2d | 2017-08-10 | 2017-08-11 |  | 0d |  |
| 93 | 1.2.10.7.1 | Complete 1st floor - zone 1 HVAC | 1d | 2017-08-10 | 2017-08-10 | 91 | 0d |  |
| 94 | 1.2.10.7.2 | Complete 2nd floor - zone 2 HVAC | 1d | 2017-08-10 | 2017-08-10 | 91 | 0d |  |
| 95 | 1.2.10.7.3 | Conduct HVAC inspection | 1d | 2017-08-11 | 2017-08-11 | 93, 94 | 0d |  |
| 96 | 1.2.10.8 | **Carpet, Tile and Appliances** | 8d | 2017-08-14 | 2017-08-23 |  | 0d |  |
| 97 | 1.2.10.8.1 | Tile entry, kitchen and baths | 3d | 2017-08-14 | 2017-08-16 | 95 | 0d |  |
| 98 | 1.2.10.8.2 | Carpet 1st floor | 2d | 2017-08-17 | 2017-08-18 | 97 | 0d |  |
| 99 | 1.2.10.8.3 | Carpet 2nd floor | 2d | 2017-08-21 | 2017-08-22 | 98 | 0d |  |
| 100 | 1.2.10.8.4 | Install appliances | 1d | 2017-08-23 | 2017-08-23 | 99, 97, 98 | 0d |  |
| 101 | 1.3 | **Landscaping and Grounds Work** | 4d | 2017-08-24 | 2017-08-29 |  | 0d |  |
| 102 | 1.3.1 | Pour concrete driveway and sidewalks | 2d | 2017-08-24 | 2017-08-25 | 100 | 0d |  |
| 103 | 1.3.2 | Install backyard fence | 2d | 2017-08-24 | 2017-08-25 | 100 | 9d |  |
| 104 | 1.3.3 | Sod and complete plantings - front yard | 2d | 2017-08-28 | 2017-08-29 | 102 | 7d |  |
| 105 | 1.3.4 | Sod and complete plantings - backyard | 1d | 2017-08-28 | 2017-08-28 | 102 | 0d |  |

| ID | WBS | Task | Type | Duration | Start | Finish | Predecessors | Total slack |
| --- | --- | --- | --- | --- | --- | --- | --- | --- |
| 106 | 1.4 | **Final Acceptance** |  | 8d | 2017-08-29 | 2017-09-07 |  | 0d |
| 107 | 1.4.1 | Complete final inspection for certificate of occupancy |  | 1d | 2017-08-29 | 2017-08-29 | 105 | 0d |
| 108 | 1.4.2 | Cleanup for occupancy |  | 1d | 2017-08-30 | 2017-08-30 | 107 | 0d |
| 109 | 1.4.3 | Perform final walk-through inspection |  | 1d | 2017-08-31 | 2017-08-31 | 108 | 0d |
| 110 | 1.4.4 | Complete punch list items |  | 5d | 2017-09-01 | 2017-09-07 | 109 | 0d |
| 111 | 1.5 | End Project Milestone | milestone | 0d | 2017-09-07 | 2017-09-07 | 110 | 0d |
